# 防火墙替换项目整体周期

Schedule from a web Gantt chart, 2025-08-15 to 2025-09-22.
Every day is a working day

## Schedule

| ID | WBS | Task | Type | Duration | Start | Finish | Predecessors | Status |
| --- | --- | --- | --- | --- | --- | --- | --- | --- |
| 2 | 1 | **调研阶段** |  | 4d | 2025-08-18 | 2025-08-21 |  |  |
| 3 | 1.1 | 调研工作启动会 |  | 1d | 2025-08-18 | 2025-08-18 |  |  |
| 4 | 1.2 | IDC网络环境调研 |  | 1d | 2025-08-18 | 2025-08-18 |  |  |
| 5 | 1.3 | 工厂网络环境调研 |  | 1d | 2025-08-19 | 2025-08-19 | 4 | waiting |
| 6 | 1.4 | 调研资料整理 |  | 1d | 2025-08-20 | 2025-08-20 | 5 | waiting |
| 7 | 1.5 | 调研工作确认会 |  | 1d | 2025-08-21 | 2025-08-21 | 6 | waiting |
| 8 | 2 | **方案设计阶段** |  | 6d | 2025-08-22 | 2025-08-27 |  |  |
| 9 | 2.1 | 方案设计工作启动会 |  | 1d | 2025-08-22 | 2025-08-22 |  |  |
| 10 | 2.2 | IDC防火墙网络优化设计 |  | 2d | 2025-08-22 | 2025-08-23 |  |  |
| 11 | 2.3 | 安全策略标准制定 |  | 1d | 2025-08-24 | 2025-08-24 | 10 | waiting |
| 12 | 2.4 | IDC安全策略优化设计 |  | 1d | 2025-08-25 | 2025-08-25 | 11 | waiting |
| 13 | 2.5 | 工厂/办公室防火墙安全策略优化设计 |  | 1d | 2025-08-26 | 2025-08-26 | 12 | waiting |
| 14 | 2.6 | 方案设计工作确认会 |  | 1d | 2025-08-27 | 2025-08-27 | 13 | waiting |
| 15 | 3 | **项目设计阶段** |  | 17d | 2025-08-29 | 2025-09-14 |  |  |
| 16 | 3.1 | 项目设计启动会 | fixed start | 1d | 2025-08-29 | 2025-08-29 |  |  |
| 17 | 3.2 | SDC上海防火墙clish脚本配置设计与测试 |  | 1d | 2025-08-29 | 2025-08-29 |  |  |
| 18 | 3.3 | CHC上海来福士中心防火墙脚本配置设计与测试 |  | 1d | 2025-09-01 | 2025-09-01 | 17 | waiting |
| 19 | 3.4 | ABAC上海前滩办公室防火墙脚本配置设计与测试 |  | 1d | 2025-09-02 | 2025-09-02 | 18 | waiting |
| 20 | 3.5 | ABAC江苏贸易公司（新如东）防火墙脚本配置设计与测试 |  | 1d | 2025-09-03 | 2025-09-03 | 19 | waiting |
| 21 | 3.6 | ABAC如东工厂防火墙脚本配置设计与测试 |  | 1d | 2025-09-04 | 2025-09-04 | 20 | waiting |
| 22 | 3.7 | ABAC陕西工厂防火墙脚本配置设计与测试 |  | 1d | 2025-09-05 | 2025-09-05 | 21 | waiting |
| 23 | 3.8 | ABAC新乡工厂防火墙脚本配置设计与测试 |  | 1d | 2025-09-08 | 2025-09-08 | 22 | waiting |
| 24 | 3.9 | ABAC天津工厂防火墙脚本配置设计与测试 |  | 1d | 2025-09-09 | 2025-09-09 | 23 | waiting |
| 25 | 3.10 | ABMC烟台工厂防火墙脚本配置设计与测试 |  | 1d | 2025-09-10 | 2025-09-10 | 24 | waiting |
| 26 | 3.11 | ABAC安徽工厂防火墙脚本配置设计与测试 |  | 1d | 2025-09-11 | 2025-09-11 | 25 | waiting |
| 27 | 3.12 | ABAC驻马店工厂防火墙脚本配置设计与测试 |  | 1d | 2025-09-12 | 2025-09-12 | 26 | waiting |
| 28 | 3.13 | ABAC鞍山工厂防火墙脚本配置设计与测试 |  | 1d | 2025-09-15 | 2025-09-15 | 27 | waiting |
| 29 | 3.14 | ABAC江西工厂防火墙脚本配置设计与测试 |  | 1d | 2025-09-16 | 2025-09-16 | 28 | waiting |
| 30 | 3.15 | ABAC哈尔滨办公室防火墙脚本配置设计与测试 |  | 1d | 2025-09-17 | 2025-09-17 | 29 | waiting |
| 31 | 3.16 | ABAC哈尔滨工厂防火墙脚本配置设计与测试 |  | 1d | 2025-09-18 | 2025-09-18 | 30 | waiting |
| 32 | 3.17 | ABSC哈尔滨办公室防火墙脚本配置设计与测试 |  | 1d | 2025-09-19 | 2025-09-19 | 31 | waiting |
| 33 | 3.18 | 项目设计工作确认会 | fixed end | 1d | 2025-09-22 | 2025-09-22 | 32 | waiting |

| ID | WBS | Task | Duration | Start | Finish | Predecessors | Status |
| --- | --- | --- | --- | --- | --- | --- | --- |
| 34 | 4 | **项目交付阶段** | 22d | 2025-08-15 | 2025-09-05 |  |  |
| 35 | 4.1 | 项目交付阶段启动会 | 1d | 2025-09-03 | 2025-09-03 | 19 | waiting |
| 36 | 4.2 | SMS服务器安装调试（远程） | 1d | 2025-08-15 | 2025-08-15 |  |  |
| 37 | 4.3 | **SDC上海防火墙设备上架入网调试（现场）** | 3d | 2025-09-03 | 2025-09-05 |  |  |
| 38 | 4.3.1 | 差旅 | 1d | 2025-09-03 | 2025-09-03 |  |  |
| 39 | 4.3.2 | 设备配置+割接 | 3d | 2025-09-03 | 2025-09-05 | 19 | waiting |
| 40 | 4.3.3 | 网络保障 | 1d | 2025-09-04 | 2025-09-04 | 20 | waiting |
| 41 | 4.4 | CHC上海来福士中心防火墙替换（现场） | 1d | 2025-08-18 | 2025-08-18 |  |  |
